# AgenciaDigital

Schedule from MS Project XML, 2027-01-04 to 2028-06-09.

## Calendars

- Estandar[Imported]: Mon-Fri 08:00-12:00, 13:00-17:00; Sat-Sun off.

## Resources

| Resource |
| --- |
| No Asignado |
| Project Manager |
| Project Sponsor |
| Operations Manager |
| Legal & Finance Lead |
| HR Manager |
| Delivery Lead |
| Technology Lead |
| Quality Lead |
| Commercial & Marketing Lead |
| DevOps Engineer |
| QA Engineer |
| Marketing Specialist |
| Web Developer |
| Pilot Project Manager 1 |
| Pilot Project Manager 2 |
| Pilot Project Manager 3 |

## Schedule

| ID | WBS | Task | Duration | Start | Finish | Predecessors | Constraint | Resources |
| --- | --- | --- | --- | --- | --- | --- | --- | --- |
| 1 | 1.1 | **1.1 Dirección y gestión del proyecto** | 375d? | 2027-01-04 | 2028-06-09 |  |  |  |
| 2 | 1.1.1 | **1.1.1 Planificación y líneas base** | 35d? | 2027-01-04 | 2027-02-19 |  |  |  |
| 3 | 1.1.1 | Formalización del inicio del proyecto | 5d? | 2027-01-04 | 2027-01-08 |  |  | Project Manager |
| 4 | 1.1.1 | Identificación y análisis de stakeholders | 10d? | 2027-01-11 | 2027-01-22 | 3 |  | Project Manager |
| 5 | 1.1.1 | Elaboración del plan de dirección del proyecto | 15d? | 2027-01-25 | 2027-02-12 | 4 |  | Project Manager |
| 6 | 1.1.1 | Aprobación del plan de dirección | 5d? | 2027-02-15 | 2027-02-19 | 5 |  | Project Manager |
| 7 | 1.1.2 | **1.1.2 Seguimiento y control integrado** | 340d | 2027-02-22 | 2028-06-09 |  |  |  |
| 8 | 1.1.2 | Seguimiento y control integrado | 340d | 2027-02-22 | 2028-06-09 | 6 |  | Project Manager [20%] |
| 9 | 1.1.3 | **1.1.3 Cambios, riesgos y comunicaciones** | 340d | 2027-02-22 | 2028-06-09 |  |  |  |
| 10 | 1.1.3 | Gestión de cambios y riesgos | 340d | 2027-02-22 | 2028-06-09 | 6 |  | Project Manager [10%] |
| 11 | 1.2 | **1.2 Modelo operativo y planificación de la implantación** | 48d? | 2027-02-22 | 2027-04-28 |  |  |  |
| 12 | 1.2.1 | **1.2.1 Diseño del modelo operativo** | 35d? | 2027-02-22 | 2027-04-09 |  |  |  |
| 13 | 1.2.1 | Análisis del modelo de negocio y requisitos operativos | 10d? | 2027-02-22 | 2027-03-05 | 6 | start no earlier than 2027-02-22 | Operations Manager |
| 14 | 1.2.1 | Diseño del modelo operativo | 15d? | 2027-03-22 | 2027-04-09 | 29 | start no earlier than 2027-03-22 | Operations Manager |
| 15 | 1.2.2 | **1.2.2 Plan de implantación y aprobación** | 13d? | 2027-04-12 | 2027-04-28 |  |  |  |
| 16 | 1.2.2 | Elaboración del plan de implantación | 8d? | 2027-04-12 | 2027-04-21 | 14 | start no earlier than 2027-04-12 | Project Manager; Operations Manager |
| 17 | 1.2.2 | Validación y aprobación del modelo operativo | 5.5d? | 2027-04-21 | 2027-04-28 | 16 | start no later than 2027-04-21 | Project Sponsor |
| 18 | 1.3 | **1.3 Constitución legal, administrativa y financiera** | 75d? | 2027-01-11 | 2027-04-23 |  |  |  |
| 19 | 1.3.1 | **1.3.1 Constitución y trámites legales** | 40d? | 2027-01-11 | 2027-03-05 |  |  |  |
| 20 | 1.3.1 | Definición de la forma jurídica y estructura societaria | 10d? | 2027-01-11 | 2027-01-22 | 3 |  | Legal & Finance Lead |
| 21 | 1.3.1 | Preparación de la documentación de constitución | 10d? | 2027-01-25 | 2027-02-05 | 20 |  | Legal & Finance Lead |
| 22 | 1.3.1 | Formalización notarial e inscripción registral | 20d? | 2027-02-08 | 2027-03-05 | 21 |  | Legal & Finance Lead |
| 23 | 1.3.2 | **1.3.2 Procesos fiscales, financieros y contractuales** | 35d? | 2027-03-08 | 2027-04-23 |  |  |  |
| 24 | 1.3.2 | Altas fiscales, laborales y administrativas | 10d? | 2027-03-08 | 2027-03-19 | 22 |  | Legal & Finance Lead |
| 25 | 1.3.2 | Apertura de cuentas y configuración financiera | 10d? | 2027-03-22 | 2027-04-02 | 24 |  | Legal & Finance Lead |
| 26 | 1.3.2 | Preparación de contratos y procedimientos administrativos | 15d? | 2027-04-05 | 2027-04-23 | 25 |  | Legal & Finance Lead |

| ID | WBS | Task | Type | Duration | Start | Finish | Predecessors | Constraint | Resources |
| --- | --- | --- | --- | --- | --- | --- | --- | --- | --- |
| 27 | 1.4 | **1.4 Organización y equipo** |  | 95d? | 2027-03-08 | 2027-07-16 |  |  |  |
| 28 | 1.4.1 | **1.4.1 Diseño organizativo** |  | 30d? | 2027-03-08 | 2027-04-16 |  |  |  |
| 29 | 1.4.1 | Definición de la estructura organizativa |  | 10d? | 2027-03-08 | 2027-03-19 |  | start no earlier than 2027-03-08 | Operations Manager |
| 30 | 1.4.1 | Definición de perfiles, roles y responsabilidades |  | 10d? | 2027-03-22 | 2027-04-02 | 29 | start no earlier than 2027-03-22 | HR Manager |
| 31 | 4.1.3 | HITO: Diseño organizativo y responsabilidades completados | milestone | 0d | 2027-04-02 | 2027-04-02 | 30FF |  |  |
| 32 | 1.4.1 | Elaboración del plan de contratación |  | 10d? | 2027-04-05 | 2027-04-16 | 30 | start no earlier than 2027-04-05 | HR Manager |
| 33 | 1.4.2 | **1.4.2 Selección y contratación** |  | 30d? | 2027-04-19 | 2027-05-28 |  |  |  |
| 34 | 1.4.2 | Selección y contratación del equipo inicial |  | 30d? | 2027-04-19 | 2027-05-28 | 24, 32 | start no earlier than 2027-04-19 | HR Manager |
| 35 | 1.4.3 | **1.4.3 Incorporación y formación** |  | 35d? | 2027-05-31 | 2027-07-16 |  |  |  |
| 36 | 1.4.3 | Incorporación y onboarding del personal |  | 15d? | 2027-05-31 | 2027-06-18 | 34 | start no earlier than 2027-05-31 | HR Manager |
| 37 | 1.4.3 | Formación en procesos, herramientas y metodologías |  | 15d? | 2027-06-21 | 2027-07-09 | 36 | start no earlier than 2027-06-21 | HR Manager |
| 38 | 1.4.3 | Validación de la preparación operativa del equipo |  | 5d? | 2027-07-12 | 2027-07-16 | 37 | start no earlier than 2027-07-12 | Operations Manager |
| 39 | 1.5 | **1.5 Catálogo de servicios y modelo de delivery** |  | 142.5d? | 2027-01-04 | 2027-07-21 |  | start no later than 2027-04-28 |  |
| 40 | 1.5.1 | **1.5.1 Catálogo de cinco servicios** |  | 30d? | 2027-04-28 | 2027-06-09 |  |  |  |
| 41 | 1.5.1 | Definición de las cinco líneas de servicio |  | 15d? | 2027-04-28 | 2027-05-19 | 17 | start no later than 2027-04-28 | Delivery Lead |
| 42 | 1.5.1 | Diseño del catálogo de servicios y entregables |  | 15d? | 2027-05-19 | 2027-06-09 | 41 | start no later than 2027-05-19 | Delivery Lead |
| 43 | 1.5.2 | **1.5.2 Modelo de delivery** |  | 127.5d? | 2027-01-25 | 2027-07-21 |  |  |  |
| 44 | 1.5.2 | Definición del modelo de estimación y presupuestación |  | 10d? | 2027-06-09 | 2027-06-23 | 42 | start no later than 2027-06-09 | Delivery Lead |
| 45 | 1.5.2 | Diseño del modelo de delivery y gestión de proyectos |  | 20d? | 2027-06-23 | 2027-07-21 | 44 | start no later than 2027-06-23 | Delivery Lead |
| 46 | 1.5.2 | Validación y aprobación del catálogo y modelo de delivery |  | 5d? | 2027-01-25 | 2027-01-29 | 48 | start no later than 2027-08-11 | Operations Manager |
| 47 | 1.5.3 | **1.5.3 Estándares y arquitectura de soluciones** |  | 15d? | 2027-01-04 | 2027-01-22 |  |  |  |
| 48 | 1.5.3 | Elaboración de plantillas y estándares de entrega |  | 15d? | 2027-01-04 | 2027-01-22 |  | start no later than 2027-07-21 | Delivery Lead |
| 49 | 1.6 | **1.6 Plataforma tecnológica** |  | 110d? | 2027-04-12 | 2027-09-10 |  |  |  |
| 50 | 1.6.1 | **1.6.1 Arquitectura e infraestructura cloud** |  | 45d? | 2027-04-12 | 2027-06-11 |  |  |  |
| 51 | 1.6.1 | Definición de requisitos tecnológicos y arquitectura de referencia |  | 15d? | 2027-04-12 | 2027-04-30 | 14 |  | Technology Lead |
| 52 | 1.6.1 | Selección de proveedores cloud y herramientas tecnológicas |  | 10d? | 2027-05-03 | 2027-05-14 | 51 |  | Technology Lead |
| 53 | 1.6.1 | Configuración de infraestructura cloud y entornos de trabajo |  | 20d? | 2027-05-17 | 2027-06-11 | 52 |  | DevOps Engineer |

| ID | WBS | Task | Duration | Start | Finish | Predecessors | Resources |
| --- | --- | --- | --- | --- | --- | --- | --- |
| 54 | 1.6.2 | **1.6.2 Herramientas y CI/CD** | 25d? | 2027-06-14 | 2027-07-16 |  |  |
| 55 | 1.6.2 | Implantación de repositorios y pipelines CI/CD | 15d? | 2027-06-14 | 2027-07-02 | 53 | DevOps Engineer |
| 56 | 1.6.2 | Configuración de herramientas de gestión y documentación | 10d? | 2027-07-05 | 2027-07-16 | 55 | Technology Lead |
| 57 | 1.6.3 | **1.6.3 Seguridad, monitorización y pruebas** | 40d? | 2027-07-19 | 2027-09-10 |  |  |
| 58 | 1.6.3 | Implantación de herramientas de testing y control de calidad | 15d? | 2027-07-19 | 2027-08-06 | 56 | QA Engineer |
| 59 | 1.6.3 | Configuración de monitorización, seguridad y copias de seguridad | 15d? | 2027-08-09 | 2027-08-27 | 58 | DevOps Engineer |
| 60 | 1.6.3 | Pruebas de integración y validación de la plataforma tecnológica | 10d? | 2027-08-30 | 2027-09-10 | 59 | Technology Lead |
| 61 | 1.7 | **1.7 Procesos, calidad y gobierno** | 90d? | 2027-01-04 | 2027-05-07 |  |  |
| 62 | 1.7.1 | **1.7.1 Procesos de gestión y desarrollo** | 80d | 2027-01-18 | 2027-05-07 |  |  |
| 63 | 1.7.1 | Diseño de procesos de gestión de proyectos | 10d | 2027-04-26 | 2027-05-07 | 69 | Project Manager |
| 64 | 1.7.1 | Diseño de procesos de gestión de riesgos y cambios | 15d | 2027-01-18 | 2027-02-05 | 66 | Quality Lead |
| 65 | 1.7.2 | **1.7.2 QA/QC y seguridad** | 35d? | 2027-01-04 | 2027-02-19 |  |  |
| 66 | 1.7.2 | Definición de estándares de calidad y criterios de aceptación | 10d | 2027-01-04 | 2027-01-15 |  | Project Manager; Quality Lead |
| 67 | 1.7.2 | Definición de políticas de seguridad y protección de datos | 10d? | 2027-02-08 | 2027-02-19 | 64 | Project Manager |
| 68 | 1.7.3 | **1.7.3 Gobierno y gestión del conocimiento** | 45d? | 2027-02-22 | 2027-04-23 |  |  |
| 69 | 1.7.3 | Definición del modelo de gobierno y responsabilidades | 10d | 2027-04-12 | 2027-04-23 | 14 | Operations Manager |
| 70 | 1.7.3 | Implantación de procesos de documentación y gestión del conocimiento | 15d? | 2027-02-22 | 2027-03-12 | 67 | Technology Lead |
| 71 | 1.7.3 | Configuración de indicadores KPI y mecanismos de seguimiento | 15d? | 2027-03-15 | 2027-04-02 | 70 | Quality Lead |
| 72 | 1.7.3 | Validación y aprobación del sistema de procesos y gobierno | 10d? | 2027-04-05 | 2027-04-16 | 71 | Quality Lead |
| 73 | 1.8 | **1.8 Capacidades comerciales y de marketing** | 100d? | 2027-01-04 | 2027-05-21 |  |  |
| 74 | 1.8.1 | **1.8.1 Identidad y presencia digital** | 100d? | 2027-01-04 | 2027-05-21 |  |  |
| 75 | 1.8.1 | Desarrollo de la identidad corporativa y materiales de marca | 15d? | 2027-05-03 | 2027-05-21 | 81 | Marketing Specialist |
| 76 | 1.8.1 | Diseño y desarrollo del sitio web corporativo | 20d? | 2027-01-04 | 2027-01-29 | 75 | Web Developer |
| 77 | 1.8.2 | **1.8.2 CRM y proceso comercial** | 20d? | 2027-01-25 | 2027-02-19 |  |  |
| 78 | 1.8.2 | Selección y configuración del sistema CRM | 15d? | 2027-02-01 | 2027-02-19 | 76 | Commercial & Marketing Lead |
| 79 | 1.8.2 | Definición de procesos comerciales y gestión de clientes | 15d? | 2027-01-25 | 2027-02-12 | 82 | Commercial & Marketing Lead |

| ID | WBS | Task | Duration | Start | Finish | Predecessors | Resources |
| --- | --- | --- | --- | --- | --- | --- | --- |
| 80 | 1.8.3 | **1.8.3 Captación y formalización de oportunidades** | 85d? | 2027-01-04 | 2027-04-30 |  |  |
| 81 | 1.8.3 | Definición de la estrategia comercial y posicionamiento de mercado | 15d? | 2027-04-12 | 2027-04-30 | 14 | Commercial & Marketing Lead |
| 82 | 1.8.3 | Elaboración de propuestas comerciales y materiales de ventas | 15d? | 2027-01-04 | 2027-01-22 |  | Commercial & Marketing Lead |
| 83 | 1.8.3 | Preparación de canales digitales y herramientas de marketing | 10d? | 2027-02-15 | 2027-02-26 | 79 | Commercial & Marketing Lead |
| 84 | 1.8.3 | Validación y aprobación de las capacidades comerciales | 5d? | 2027-03-01 | 2027-03-05 | 83 | Marketing Specialist |
| 85 | 1.9 | **1.9 Proyectos piloto** | 240d? | 2027-02-22 | 2028-01-21 |  |  |
| 86 | 1.9.1 | **1.9.1 Definición preliminar del alcance de pilotos** | 10d? | 2027-02-22 | 2027-03-05 |  |  |
| 87 | 1.9.1 | Confirmación del alcance y requisitos de los tres proyectos piloto | 10d? | 2027-02-22 | 2027-03-05 | 6 | Delivery Lead |
| 88 | 1.9.2 | **1.9.2 Planificación preliminar de pilotos** | 15d? | 2027-03-08 | 2027-03-26 |  |  |
| 89 | 1.9.2 | Planificación detallada de los proyectos piloto | 15d? | 2027-03-08 | 2027-03-26 | 87 | Delivery Lead |
| 90 | 1.9.3 | **1.9.3 Contratos y requisitos de tres clientes** | 10d? | 2027-03-29 | 2027-04-09 |  |  |
| 91 | 1.9.3 | Formalización de contratos y requisitos de los tres clientes piloto | 10d? | 2027-03-29 | 2027-04-09 | 84, 89 |  |
| 92 | 1.9.4 | **1.9.4 Preparación de equipos y entornos** | 10d? | 2027-09-13 | 2027-09-24 |  |  |
| 93 | 1.9.4 | Preparación de equipos y entornos de ejecución | 10d? | 2027-09-13 | 2027-09-24 | 38, 46, 60, 72, 83, 89 | Technology Lead |
| 94 | 1.9.5 | **1.9.5 Ejecución del proyecto piloto 1** | 60d? | 2027-09-27 | 2027-12-17 |  |  |
| 95 | 1.9.5 | Ejecución del proyecto piloto 1 | 60d? | 2027-09-27 | 2027-12-17 | 93, 91 | Pilot Project Manager 1 |
| 96 | 1.9.6 | **1.9.6 Ejecución del proyecto piloto 2** | 60d? | 2027-09-27 | 2027-12-17 |  |  |
| 97 | 1.9.6 | Ejecución del proyecto piloto 2 | 60d? | 2027-09-27 | 2027-12-17 | 93, 91 | Pilot Project Manager 2 |
| 98 | 1.9.7 | **1.9.7 Ejecución del proyecto piloto 3** | 60d? | 2027-09-27 | 2027-12-17 |  |  |
| 99 | 1.9.7 | Ejecución del proyecto piloto 3 | 60d? | 2027-09-27 | 2027-12-17 | 93, 91 | Pilot Project Manager 3 |
| 100 | 1.9.8 | **1.9.8 Evaluación de resultados de pilotos** | 15d? | 2027-12-20 | 2028-01-07 |  |  |
| 101 | 1.9.8 | Evaluación de resultados y recopilación de indicadores KPI | 15d? | 2027-12-20 | 2028-01-07 | 95, 97, 99 | Quality Lead |
| 102 | 1.9.9 | **1.9.9 Aceptación formal de tres pilotos** | 10d? | 2028-01-10 | 2028-01-21 |  |  |
| 103 | 1.9.9 | Validación y aceptación formal de los tres proyectos piloto | 10d? | 2028-01-10 | 2028-01-21 | 101 | Delivery Lead |

| ID | WBS | Task | Duration | Start | Finish | Predecessors | Constraint | Resources |
| --- | --- | --- | --- | --- | --- | --- | --- | --- |
| 104 | 1.10 | **1.10 Validación y transición a operaciones** | 339d? | 2027-01-04 | 2028-04-21 |  |  |  |
| 105 | 1.10.1 | **1.10.1 Evaluación de mejoras operativas** | 20d? | 2028-01-24 | 2028-02-18 |  |  |  |
| 106 | 1.10.1 | Evaluación integral de los resultados del proyecto | 10d? | 2028-01-24 | 2028-02-04 | 103 |  | Project Manager |
| 107 | 1.10.1 | Verificación del cumplimiento de los objetivos y criterios de aceptación | 10d? | 2028-02-07 | 2028-02-18 | 106 |  | Quality Lead |
| 108 | 1.10.2 | **1.10.2 Validación de preparación operativa** | 10d? | 2028-04-03 | 2028-04-14 |  |  |  |
| 109 | 1.10.2 | Validación de la preparación operativa de la agencia | 10d? | 2028-04-03 | 2028-04-14 | 112 |  | Operations Manager |
| 110 | 1.10.3 | **1.10.3 Transferencia y aceptación operativa** | 339d? | 2027-01-04 | 2028-04-21 |  |  |  |
| 111 | 1.10.3 | Preparación de la documentación de transición a operaciones | 15d? | 2028-02-21 | 2028-03-10 | 107 |  | Operations Manager |
| 112 | 1.10.3 | Transferencia de conocimientos y responsabilidades al equipo operativo | 15d? | 2028-03-13 | 2028-03-31 | 111 |  | Operations Manager |
| 113 | 1.10.3 | Aprobación formal de la transición a operaciones | 5d? | 2027-01-04 | 2027-01-08 | 109 |  | Project Sponsor |
| 114 | 1.10.3 | Transición formal a operaciones aprobada | 0d | 2028-04-21 | 2028-04-21 | 113 | start no earlier than 2028-04-21 |  |
| 115 | 1.11 | **1.11 Cierre del proyecto** | 359d? | 2027-01-04 | 2028-05-18 |  |  |  |
| 116 | 1.11.1 | **1.11.1 Cierre administrativo y contractual** | 344d? | 2027-01-11 | 2028-05-04 |  |  |  |
| 117 | 1.11.1 | Verificación final de entregables y compromisos contractuales | 5d? | 2028-04-21 | 2028-04-27 | 114 |  | Project Manager |
| 118 | 1.11.1 | Evaluación final del presupuesto, cronograma y desempeño | 5d? | 2028-04-28 | 2028-05-04 | 117 |  | Project Manager |
| 119 | 1.11.1 | Cierre administrativo, financiero y contractual | 10d? | 2027-01-11 | 2027-01-22 | 122 |  | Legal & Finance Lead |
| 120 | 1.11.2 | **1.11.2 Informe final y lecciones aprendidas** | 359d? | 2027-01-04 | 2028-05-18 |  |  |  |
| 121 | 1.11.2 | Elaboración del informe final del proyecto | 10d? | 2028-05-05 | 2028-05-18 | 118 |  | Project Manager |
| 122 | 1.11.2 | Documentación de lecciones aprendidas y recomendaciones | 5d? | 2027-01-04 | 2027-01-08 |  |  | Project Manager |
| 123 | 1.11.3 | **1.11.3 Aceptación y cierre formal** | 5d? | 2027-01-25 | 2027-01-29 |  |  |  |
| 124 | 1.11.3 | Presentación y aprobación del acta de cierre del proyecto | 5d? | 2027-01-25 | 2027-01-29 | 119 |  | Project Sponsor |
