# AgenciaDigital

Schedule from MS Project XML, 2027-01-04 to 2028-06-16.

## Calendars

- Estandar: Mon-Fri 08:00-12:00, 13:00-17:00; Sat-Sun off.

## Resources

| Resource |
| --- |
| No Asignado |
| Project Manager |
| Project Sponsor |
| Operations Manager |
| Legal & Finance Lead |
| HR Manager |
| Delivery Lead |
| Technology Lead |
| Quality Lead |
| Commercial & Marketing Lead |
| DevOps Engineer |
| QA Engineer |
| Marketing Specialist |
| Web Developer |
| Pilot Project Manager 1 |
| Pilot Project Manager 2 |
| Pilot Project Manager 3 |

## Schedule

| ID | WBS | Task | Type | Duration | Start | Finish | Predecessors | Constraint | Resources |
| --- | --- | --- | --- | --- | --- | --- | --- | --- | --- |
| 1 | 1.1 | **1.1 Dirección y gestión del proyecto** |  | 375d? | 2027-01-04 | 2028-06-09 |  |  |  |
| 2 | 1.1.1 | **1.1.1 Planificación y líneas base** |  | 35d? | 2027-01-04 | 2027-02-19 |  |  |  |
| 3 | 1.1.1 | Formalización del inicio del proyecto |  | 5d? | 2027-01-04 | 2027-01-08 |  |  | Project Manager |
| 4 | 1.1.2 | HITO: Inicio formal del proyecto | milestone | 0d? | 2027-01-04 | 2027-01-04 |  |  |  |
| 5 | 1.1.1 | Identificación y análisis de stakeholders |  | 10d? | 2027-01-11 | 2027-01-22 | 3 |  | Project Manager |
| 6 | 1.1.1 | Elaboración del plan de dirección del proyecto |  | 15d? | 2027-01-25 | 2027-02-12 | 5 |  | Project Manager |
| 7 | 1.1.1 | Aprobación del plan de dirección |  | 5d? | 2027-02-15 | 2027-02-19 | 6 |  | Project Manager |
| 8 | 1.1.2 | **1.1.2 Seguimiento y control integrado** |  | 340d? | 2027-02-22 | 2028-06-09 |  |  |  |
| 9 | 1.1.2 | Seguimiento y control integrado |  | 340d | 2027-02-22 | 2028-06-09 | 7 |  | Project Manager [20%] |
| 10 | 1.1.3 | **1.1.3 Cambios, riesgos y comunicaciones** |  | 340d? | 2027-02-22 | 2028-06-09 |  |  |  |
| 11 | 1.1.3 | Gestión de cambios y riesgos |  | 340d | 2027-02-22 | 2028-06-09 | 7 |  | Project Manager [10%] |
| 12 | 1.2 | **1.2 Modelo operativo y planificación de la implantación** |  | 48d? | 2027-02-22 | 2027-04-28 |  |  |  |
| 13 | 1.2.1 | **1.2.1 Diseño del modelo operativo** |  | 35d? | 2027-02-22 | 2027-04-09 |  |  |  |
| 14 | 1.2.1 | Análisis del modelo de negocio y requisitos operativos |  | 10d? | 2027-02-22 | 2027-03-05 | 7 | start no earlier than 2027-02-22 | Operations Manager |
| 15 | 1.2.1 | Diseño del modelo operativo |  | 15d? | 2027-03-22 | 2027-04-09 | 32 | start no earlier than 2027-03-22 | Operations Manager |
| 16 | 1.2.2 | **1.2.2 Plan de implantación y aprobación** |  | 13d? | 2027-04-12 | 2027-04-28 |  |  |  |
| 17 | 1.2.2 | Elaboración del plan de implantación |  | 7.5d? | 2027-04-12 | 2027-04-21 | 15 | start no earlier than 2027-04-12 | Project Manager; Operations Manager |
| 18 | 1.2.2 | Validación y aprobación del modelo operativo |  | 5.5d? | 2027-04-21 | 2027-04-28 | 17 | start no earlier than 2027-04-21 | Project Sponsor |
| 19 | 2.2.3 | HITO: Modelo operativo y plan de implantación aprobados | milestone | 0d? | 2027-04-28 | 2027-04-28 | 18FF |  |  |
| 20 | 1.3 | **1.3 Constitución legal, administrativa y financiera** |  | 75d? | 2027-01-11 | 2027-04-23 |  |  |  |
| 21 | 1.3.1 | **1.3.1 Constitución y trámites legales** |  | 40d? | 2027-01-11 | 2027-03-05 |  |  |  |
| 22 | 1.3.1 | Definición de la forma jurídica y estructura societaria |  | 10d? | 2027-01-11 | 2027-01-22 | 3 |  | Legal & Finance Lead |
| 23 | 1.3.1 | Preparación de la documentación de constitución |  | 10d? | 2027-01-25 | 2027-02-05 | 22 |  | Legal & Finance Lead |
| 24 | 1.3.1 | Formalización notarial e inscripción registral |  | 20d? | 2027-02-08 | 2027-03-05 | 23 |  | Legal & Finance Lead |

| ID | WBS | Task | Type | Duration | Start | Finish | Predecessors | Constraint | Resources |
| --- | --- | --- | --- | --- | --- | --- | --- | --- | --- |
| 25 | 1.3.2 | **1.3.2 Procesos fiscales, financieros y contractuales** |  | 35d? | 2027-03-08 | 2027-04-23 |  |  |  |
| 26 | 1.3.2 | Altas fiscales, laborales y administrativas |  | 10d? | 2027-03-08 | 2027-03-19 | 24 |  | Legal & Finance Lead |
| 27 | 1.3.2 | Apertura de cuentas y configuración financiera |  | 10d? | 2027-03-22 | 2027-04-02 | 26 |  | Legal & Finance Lead |
| 28 | 1.3.2 | Preparación de contratos y procedimientos administrativos |  | 15d? | 2027-04-05 | 2027-04-23 | 27 |  | Legal & Finance Lead |
| 29 | 3.2.4 | HITO: Constitución legal y administrativa completada | milestone | 0d? | 2027-04-23 | 2027-04-23 | 28FF |  |  |
| 30 | 1.4 | **1.4 Organización y equipo** |  | 95d? | 2027-03-08 | 2027-07-16 |  |  |  |
| 31 | 1.4.1 | **1.4.1 Diseño organizativo** |  | 30d? | 2027-03-08 | 2027-04-16 |  |  |  |
| 32 | 1.4.1 | Definición de la estructura organizativa |  | 10d? | 2027-03-08 | 2027-03-19 | 14 | start no earlier than 2027-03-08 | Operations Manager |
| 33 | 1.4.1 | Definición de perfiles, roles y responsabilidades |  | 10d? | 2027-03-22 | 2027-04-02 | 32 | start no earlier than 2027-03-22 | HR Manager |
| 34 | 4.1.3 | HITO: Diseño organizativo y responsabilidades completados | milestone | 0d? | 2027-04-02 | 2027-04-02 | 33FF |  |  |
| 35 | 1.4.1 | Elaboración del plan de contratación |  | 10d? | 2027-04-05 | 2027-04-16 | 33 | start no earlier than 2027-04-05 | HR Manager |
| 36 | 1.4.2 | **1.4.2 Selección y contratación** |  | 30d? | 2027-04-19 | 2027-05-28 |  |  |  |
| 37 | 1.4.2 | Selección y contratación del equipo inicial |  | 30d? | 2027-04-19 | 2027-05-28 | 26, 35 | start no earlier than 2027-04-19 | HR Manager |
| 38 | 1.4.3 | **1.4.3 Incorporación y formación** |  | 35d? | 2027-05-31 | 2027-07-16 |  |  |  |
| 39 | 1.4.3 | Incorporación y onboarding del personal |  | 15d? | 2027-05-31 | 2027-06-18 | 37 | start no earlier than 2027-05-31 | HR Manager |
| 40 | 1.4.3 | Formación en procesos, herramientas y metodologías |  | 15d? | 2027-06-21 | 2027-07-09 | 39 | start no earlier than 2027-06-21 | HR Manager |
| 41 | 1.4.3 | Validación de la preparación operativa del equipo |  | 5d? | 2027-07-12 | 2027-07-16 | 40 | start no earlier than 2027-07-12 | Operations Manager |
| 42 | 4.3.4 | HITO: Equipo inicial incorporado y preparado | milestone | 0d? | 2027-07-16 | 2027-07-16 | 41FF |  |  |
| 43 | 1.5 | **1.5 Catálogo de servicios y modelo de delivery** |  | 80d? | 2027-04-29 | 2027-08-18 |  |  |  |
| 44 | 1.5.1 | **1.5.1 Catálogo de cinco servicios** |  | 30d? | 2027-04-29 | 2027-06-09 |  |  |  |
| 45 | 1.5.1 | Definición de las cinco líneas de servicio |  | 15d? | 2027-04-29 | 2027-05-19 | 18 | start no earlier than 2027-04-29 | Delivery Lead |
| 46 | 1.5.1 | Diseño del catálogo de servicios y entregables |  | 15d? | 2027-05-20 | 2027-06-09 | 45 | start no earlier than 2027-05-20 | Delivery Lead |
| 47 | 1.5.2 | **1.5.2 Modelo de delivery** |  | 50d? | 2027-06-10 | 2027-08-18 |  |  |  |
| 48 | 1.5.2 | Definición del modelo de estimación y presupuestación |  | 10d? | 2027-06-10 | 2027-06-23 | 46 | start no earlier than 2027-06-10 | Delivery Lead |
| 49 | 1.5.2 | Diseño del modelo de delivery y gestión de proyectos |  | 20d? | 2027-06-24 | 2027-07-21 | 48 | start no earlier than 2027-06-24 | Delivery Lead |
| 50 | 1.5.2 | Validación y aprobación del catálogo y modelo de delivery |  | 5d? | 2027-08-12 | 2027-08-18 | 52 | start no earlier than 2027-08-12 | Operations Manager |

| ID | WBS | Task | Type | Duration | Start | Finish | Predecessors | Constraint | Resources |
| --- | --- | --- | --- | --- | --- | --- | --- | --- | --- |
| 51 | 1.5.3 | **1.5.3 Estándares y arquitectura de soluciones** |  | 15d? | 2027-07-22 | 2027-08-11 |  |  |  |
| 52 | 1.5.3 | Elaboración de plantillas y estándares de entrega |  | 15d? | 2027-07-22 | 2027-08-11 | 49 | start no earlier than 2027-07-22 | Delivery Lead |
| 53 | 1.6 | **1.6 Plataforma tecnológica** |  | 110d? | 2027-04-12 | 2027-09-10 |  |  |  |
| 54 | 1.6.1 | **1.6.1 Arquitectura e infraestructura cloud** |  | 45d? | 2027-04-12 | 2027-06-11 |  |  |  |
| 55 | 1.6.1 | Definición de requisitos tecnológicos y arquitectura de referencia |  | 15d? | 2027-04-12 | 2027-04-30 | 15 |  | Technology Lead |
| 56 | 1.6.1 | Selección de proveedores cloud y herramientas tecnológicas |  | 10d? | 2027-05-03 | 2027-05-14 | 55 |  | Technology Lead |
| 57 | 1.6.1 | Configuración de infraestructura cloud y entornos de trabajo |  | 20d? | 2027-05-17 | 2027-06-11 | 56 |  | DevOps Engineer |
| 58 | 1.6.2 | **1.6.2 Herramientas y CI/CD** |  | 25d? | 2027-06-14 | 2027-07-16 |  |  |  |
| 59 | 1.6.2 | Implantación de repositorios y pipelines CI/CD |  | 15d? | 2027-06-14 | 2027-07-02 | 57 |  | DevOps Engineer |
| 60 | 1.6.2 | Configuración de herramientas de gestión y documentación |  | 10d? | 2027-07-05 | 2027-07-16 | 59 |  | Technology Lead |
| 61 | 1.6.3 | **1.6.3 Seguridad, monitorización y pruebas** |  | 40d? | 2027-07-19 | 2027-09-10 |  |  |  |
| 62 | 1.6.3 | Implantación de herramientas de testing y control de calidad |  | 15d? | 2027-07-19 | 2027-08-06 | 60 |  | QA Engineer |
| 63 | 1.6.3 | Configuración de monitorización, seguridad y copias de seguridad |  | 15d? | 2027-08-09 | 2027-08-27 | 62 |  | DevOps Engineer |
| 64 | 1.6.3 | Pruebas de integración y validación de la plataforma tecnológica |  | 10d? | 2027-08-30 | 2027-09-10 | 63 |  | Technology Lead |
| 65 | 6.3.4 | HITO: Plataforma tecnológica básica operativa | milestone | 0d? | 2027-09-10 | 2027-09-10 | 64FF |  |  |
| 66 | 1.7 | **1.7 Procesos, calidad y gobierno** |  | 95d? | 2027-04-12 | 2027-08-20 |  |  |  |
| 67 | 1.7.1 | **1.7.1 Procesos de gestión y desarrollo** |  | 35d? | 2027-04-26 | 2027-06-11 |  |  |  |
| 68 | 1.7.1 | Diseño de procesos de gestión de proyectos |  | 10d | 2027-04-26 | 2027-05-07 | 74 |  | Project Manager |
| 69 | 1.7.1 | Diseño de procesos de gestión de riesgos y cambios |  | 15d | 2027-05-24 | 2027-06-11 | 71 |  | Quality Lead |
| 70 | 1.7.2 | **1.7.2 QA/QC y seguridad** |  | 35d? | 2027-05-10 | 2027-06-25 |  |  |  |
| 71 | 1.7.2 | Definición de estándares de calidad y criterios de aceptación |  | 10d | 2027-05-10 | 2027-05-21 | 68 |  | Project Manager; Quality Lead |
| 72 | 1.7.2 | Definición de políticas de seguridad y protección de datos |  | 10d? | 2027-06-14 | 2027-06-25 | 69 |  | Project Manager |
| 73 | 1.7.3 | **1.7.3 Gobierno y gestión del conocimiento** |  | 95d? | 2027-04-12 | 2027-08-20 |  |  |  |
| 74 | 1.7.3 | Definición del modelo de gobierno y responsabilidades |  | 10d | 2027-04-12 | 2027-04-23 | 15 |  | Operations Manager |
| 75 | 1.7.3 | Implantación de procesos de documentación y gestión del conocimiento |  | 15d? | 2027-06-28 | 2027-07-16 | 72 |  | Technology Lead |
| 76 | 1.7.3 | Configuración de indicadores KPI y mecanismos de seguimiento |  | 15d? | 2027-07-19 | 2027-08-06 | 75 |  | Quality Lead |
| 77 | 1.7.3 | Validación y aprobación del sistema de procesos y gobierno |  | 10d? | 2027-08-09 | 2027-08-20 | 76 |  | Quality Lead |
| 78 | 7.3.5 | HITO: Procesos de gestión, calidad y gobierno aprobados | milestone | 0d? | 2027-08-20 | 2027-08-20 | 77FF |  |  |

| ID | WBS | Task | Type | Duration | Start | Finish | Predecessors | Resources |
| --- | --- | --- | --- | --- | --- | --- | --- | --- |
| 79 | 1.8 | **1.8 Capacidades comerciales y de marketing** |  | 110d? | 2027-04-12 | 2027-09-10 |  |  |
| 80 | 1.8.1 | **1.8.1 Identidad y presencia digital** |  | 35d? | 2027-05-03 | 2027-06-18 |  |  |
| 81 | 1.8.1 | Desarrollo de la identidad corporativa y materiales de marca |  | 15d? | 2027-05-03 | 2027-05-21 | 87 | Marketing Specialist |
| 82 | 1.8.1 | Diseño y desarrollo del sitio web corporativo |  | 20d? | 2027-05-24 | 2027-06-18 | 81 | Web Developer |
| 83 | 1.8.2 | **1.8.2 CRM y proceso comercial** |  | 45d? | 2027-06-21 | 2027-08-20 |  |  |
| 84 | 1.8.2 | Selección y configuración del sistema CRM |  | 15d? | 2027-06-21 | 2027-07-09 | 82 | Commercial & Marketing Lead |
| 85 | 1.8.2 | Definición de procesos comerciales y gestión de clientes |  | 15d? | 2027-08-02 | 2027-08-20 | 88 | Commercial & Marketing Lead |
| 86 | 1.8.3 | **1.8.3 Captación y formalización de oportunidades** |  | 110d? | 2027-04-12 | 2027-09-10 |  |  |
| 87 | 1.8.3 | Definición de la estrategia comercial y posicionamiento de mercado |  | 15d? | 2027-04-12 | 2027-04-30 | 15 | Commercial & Marketing Lead |
| 88 | 1.8.3 | Elaboración de propuestas comerciales y materiales de ventas |  | 15d? | 2027-07-12 | 2027-07-30 | 84 | Commercial & Marketing Lead |
| 89 | 1.8.3 | Preparación de canales digitales y herramientas de marketing |  | 10d? | 2027-08-23 | 2027-09-03 | 85 | Commercial & Marketing Lead |
| 90 | 1.8.3 | Validación y aprobación de las capacidades comerciales |  | 5d? | 2027-09-06 | 2027-09-10 | 89 | Marketing Specialist |
| 91 | 1.9 | **1.9 Proyectos piloto** |  | 240d? | 2027-02-22 | 2028-01-21 |  |  |
| 92 | 1.9.1 | **1.9.1 Definición preliminar del alcance de pilotos** |  | 10d? | 2027-02-22 | 2027-03-05 |  |  |
| 93 | 1.9.1 | Confirmación del alcance y requisitos de los tres proyectos piloto |  | 10d? | 2027-02-22 | 2027-03-05 | 7 | Delivery Lead |
| 94 | 1.9.2 | **1.9.2 Planificación preliminar de pilotos** |  | 15d? | 2027-03-08 | 2027-03-26 |  |  |
| 95 | 1.9.2 | Planificación detallada de los proyectos piloto |  | 15d? | 2027-03-08 | 2027-03-26 | 93 | Delivery Lead |
| 96 | 1.9.3 | **1.9.3 Contratos y requisitos de tres clientes** |  | 10d? | 2027-09-13 | 2027-09-24 |  |  |
| 97 | 1.9.3 | Formalización de contratos y requisitos de los tres clientes piloto |  | 10d? | 2027-09-13 | 2027-09-24 | 90, 95 |  |
| 98 | 1.9.4 | **1.9.4 Preparación de equipos y entornos** |  | 10d? | 2027-09-13 | 2027-09-24 |  |  |
| 99 | 1.9.4 | Preparación de equipos y entornos de ejecución |  | 10d? | 2027-09-13 | 2027-09-24 | 41, 50, 64, 77, 89, 95 | Technology Lead |
| 100 | 9.4.2 | HITO: Contratos y entornos de los tres pilotos preparados | milestone | 0d? | 2027-09-24 | 2027-09-24 | 97FF, 99FF |  |
| 101 | 1.9.5 | **1.9.5 Ejecución del proyecto piloto 1** |  | 60d? | 2027-09-27 | 2027-12-17 |  |  |
| 102 | 1.9.5 | Ejecución del proyecto piloto 1 |  | 60d? | 2027-09-27 | 2027-12-17 | 99, 97 | Pilot Project Manager 1 |
| 103 | 9.5.2 | HITO: Inicio de ejecución de los tres pilotos | milestone | 0d? | 2027-09-27 | 2027-09-27 | 102SS, 105SS, 107SS |  |

| ID | WBS | Task | Type | Duration | Start | Finish | Predecessors | Constraint | Resources |
| --- | --- | --- | --- | --- | --- | --- | --- | --- | --- |
| 104 | 1.9.6 | **1.9.6 Ejecución del proyecto piloto 2** |  | 60d? | 2027-09-27 | 2027-12-17 |  |  |  |
| 105 | 1.9.6 | Ejecución del proyecto piloto 2 |  | 60d? | 2027-09-27 | 2027-12-17 | 99, 97 |  | Pilot Project Manager 2 |
| 106 | 1.9.7 | **1.9.7 Ejecución del proyecto piloto 3** |  | 60d? | 2027-09-27 | 2027-12-17 |  |  |  |
| 107 | 1.9.7 | Ejecución del proyecto piloto 3 |  | 60d? | 2027-09-27 | 2027-12-17 | 99, 97 |  | Pilot Project Manager 3 |
| 108 | 1.9.8 | **1.9.8 Evaluación de resultados de pilotos** |  | 15d? | 2027-12-20 | 2028-01-07 |  |  |  |
| 109 | 1.9.8 | Evaluación de resultados y recopilación de indicadores KPI |  | 15d? | 2027-12-20 | 2028-01-07 | 102, 105, 107 |  | Quality Lead |
| 110 | 1.9.9 | **1.9.9 Aceptación formal de tres pilotos** |  | 10d? | 2028-01-10 | 2028-01-21 |  |  |  |
| 111 | 1.9.9 | Validación y aceptación formal de los tres proyectos piloto |  | 10d? | 2028-01-10 | 2028-01-21 | 109 |  | Delivery Lead |
| 112 | 9.9.2 | HITO: Tres proyectos piloto aceptados formalmente | milestone | 0d? | 2028-01-21 | 2028-01-21 | 111FF |  |  |
| 113 | 1.10 | **1.10 Validación y transición a operaciones** |  | 65d? | 2028-01-24 | 2028-04-21 |  |  |  |
| 114 | 1.10.1 | **1.10.1 Evaluación de mejoras operativas** |  | 20d? | 2028-01-24 | 2028-02-18 |  |  |  |
| 115 | 1.10.1 | Evaluación integral de los resultados del proyecto |  | 10d? | 2028-01-24 | 2028-02-04 | 111 |  | Project Manager |
| 116 | 1.10.1 | Verificación del cumplimiento de los objetivos y criterios de aceptación |  | 10d? | 2028-02-07 | 2028-02-18 | 115 |  | Quality Lead |
| 117 | 1.10.2 | **1.10.2 Validación de preparación operativa** |  | 10d? | 2028-04-03 | 2028-04-14 |  |  |  |
| 118 | 1.10.2 | Validación de la preparación operativa de la agencia |  | 10d? | 2028-04-03 | 2028-04-14 | 122 |  | Operations Manager |
| 119 | 10.2.2 | HITO: Preparación operativa de la agencia validada | milestone | 0d? | 2028-04-14 | 2028-04-14 | 118FF |  |  |
| 120 | 1.10.3 | **1.10.3 Transferencia y aceptación operativa** |  | 45d? | 2028-02-21 | 2028-04-21 |  |  |  |
| 121 | 1.10.3 | Preparación de la documentación de transición a operaciones |  | 15d? | 2028-02-21 | 2028-03-10 | 116 |  | Operations Manager |
| 122 | 1.10.3 | Transferencia de conocimientos y responsabilidades al equipo operativo |  | 15d? | 2028-03-13 | 2028-03-31 | 121 |  | Operations Manager |
| 123 | 1.10.3 | Aprobación formal de la transición a operaciones |  | 5d? | 2028-04-17 | 2028-04-21 | 118 |  | Project Sponsor |
| 124 | 10.3.4 | HITO: Transición formal a operaciones aprobada | milestone | 0d? | 2028-04-21 | 2028-04-21 | 123FF |  |  |
| 125 | 1.10.3 | Transición formal a operaciones aprobada |  | 0d | 2028-04-24 | 2028-04-21 | 123 | start no earlier than 2028-04-21 |  |
| 126 | 1.11 | **1.11 Cierre del proyecto** |  | 40d? | 2028-04-24 | 2028-06-16 |  |  |  |
| 127 | 1.11.1 | **1.11.1 Cierre administrativo y contractual** |  | 35d? | 2028-04-24 | 2028-06-09 |  |  |  |
| 128 | 1.11.1 | Verificación final de entregables y compromisos contractuales |  | 5d? | 2028-04-24 | 2028-04-28 | 125 |  | Project Manager |
| 129 | 1.11.1 | Evaluación final del presupuesto, cronograma y desempeño |  | 5d? | 2028-05-01 | 2028-05-05 | 128 |  | Project Manager |
| 130 | 1.11.1 | Cierre administrativo, financiero y contractual |  | 10d? | 2028-05-29 | 2028-06-09 | 133 |  | Legal & Finance Lead |

| ID | WBS | Task | Type | Duration | Start | Finish | Predecessors | Resources |
| --- | --- | --- | --- | --- | --- | --- | --- | --- |
| 131 | 1.11.2 | **1.11.2 Informe final y lecciones aprendidas** |  | 15d? | 2028-05-08 | 2028-05-26 |  |  |
| 132 | 1.11.2 | Elaboración del informe final del proyecto |  | 10d? | 2028-05-08 | 2028-05-19 | 129 | Project Manager |
| 133 | 1.11.2 | Documentación de lecciones aprendidas y recomendaciones |  | 5d? | 2028-05-22 | 2028-05-26 | 132 | Project Manager |
| 134 | 1.11.3 | **1.11.3 Aceptación y cierre formal** |  | 5d? | 2028-06-12 | 2028-06-16 |  |  |
| 135 | 1.11.3 | Presentación y aprobación del acta de cierre del proyecto |  | 5d? | 2028-06-12 | 2028-06-16 | 130 | Project Sponsor |
| 136 | 11.3.2 | HITO: Cierre formal del proyecto completado | milestone | 0d? | 2028-06-16 | 2028-06-16 | 135FF |  |
